# Product #23 Development

Schedule from MS Project XML, 2001-01-01 to 2001-05-23.
Project shelved due to test marketing results

## Calendars

- Standard: Mon-Fri 08:00-12:00, 13:00-17:00; Sat-Sun off.

## Resources

| Resource | Group | Rate | Cost per use |
| --- | --- | --- | --- |
| Scott Adams | Production | 8 |  |
| Mary Logan | Production | 10 |  |
| Howard Thompson | Sales | 22.5 | 1000 |
| Mel Lloyd | Shipping | 15 |  |
| Jenny Benson | Personnel | 35 |  |
| Assemblers | Assembly | 8.5 |  |
| Bill Kirk | Design | 16.83 |  |
| John Melville | Finance | 14.42 |  |

## Schedule

| ID | WBS | Task | Duration | Start | Finish | Predecessors | Total slack | Resources |
| --- | --- | --- | --- | --- | --- | --- | --- | --- |
| 1 | 1 | Begin project | 0d | 2001-01-01 | 2001-01-01 |  | 0d |  |
| 2 | 2 | **Design Phase** | 45d | 2001-01-01 | 2001-03-02 |  | 0d |  |
| 3 | 2.1 | Prototype design | 25d | 2001-01-01 | 2001-02-02 |  | 0d | Bill Kirk; Scott Adams [50%] |
| 4 | 2.2 | Test prototype | 20d | 2001-02-05 | 2001-03-02 | 3 | 0d | Bill Kirk; Scott Adams |
| 5 | 2.3 | Prototype completed | 0d | 2001-03-02 | 2001-03-02 | 4 | 0d |  |
| 6 | 3 | **Finance Phase** | 45d | 2001-01-01 | 2001-03-02 |  | 0d |  |
| 7 | 3.1 | Create business plan | 15d | 2001-01-01 | 2001-01-19 |  | 0d | John Melville |
| 8 | 3.2 | Present to current investors | 0d | 2001-01-19 | 2001-01-19 | 7 | 0d | John Melville |
| 9 | 3.3 | Meet with bankers | 0d | 2001-01-19 | 2001-01-19 | 8 | 0d | John Melville |
| 10 | 3.4 | Circulate plan w/ venture capitalists | 5d | 2001-01-22 | 2001-01-26 | 8 | 0d | John Melville |
| 11 | 3.5 | Negotiate with venture capitalists | 10d | 2001-01-29 | 2001-02-09 | 10 | 0d | John Melville |
| 12 | 3.6 | Reach agreement | 0d | 2001-02-09 | 2001-02-09 | 11 | 0d |  |
| 13 | 3.7 | Create legal documentation | 15d | 2001-02-12 | 2001-03-02 | 12 | 0d | John Melville |
| 14 | 3.8 | Financing closed | 0d | 2001-03-02 | 2001-03-02 | 13 | 0d |  |
| 15 | 2 | **Production Phase** | 73d | 2001-01-15 | 2001-04-25 |  | 0d |  |
| 16 | 2.1 | Setup assembly line | 15d | 2001-03-05 | 2001-03-23 | 5 | 0d | Scott Adams |
| 17 | 2.2 | Hire assemblers | 50d | 2001-01-15 | 2001-03-23 | 16FF | 0d | Scott Adams |
| 18 | 2.3 | Assemble first batch | 3d | 2001-03-26 | 2001-03-28 | 5, 16, 17 | 0d | Assemblers |
| 19 | 4.4 | Quality testing | 10d | 2001-03-29 | 2001-04-11 | 18 | 0d | Bill Kirk |
| 20 | 4.5 | Assemble product | 10d | 2001-04-12 | 2001-04-25 | 19 | 0d | Assemblers |
| 21 | 2.4 | Inventory available | 0d | 2001-04-25 | 2001-04-25 | 20 | 0d |  |
| 22 | 5 | **Marketing and Sales Phase** | 30d | 2001-03-05 | 2001-04-13 | 6 | 0d |  |
| 23 | 5.1 | Develop marketing plan | 5d | 2001-03-05 | 2001-03-09 |  | 0d | Howard Thompson |
| 24 | 5.2 | Create sales materials | 25d | 2001-03-12 | 2001-04-13 | 23 | 0d | Howard Thompson |
| 25 | 5.3 | Create advertising plan | 15d | 2001-03-12 | 2001-03-30 | 23 | 0d | Howard Thompson |
| 26 | 5.4 | Develop PR plan | 15d | 2001-03-12 | 2001-03-30 | 23 | 0d | Howard Thompson |
| 27 | 5.5 | Sales training | 15d | 2001-03-26 | 2001-04-13 | 24FS-15d | 0d | Howard Thompson |
| 28 | 5.6 | Start sales program | 0d | 2001-04-13 | 2001-04-13 | 27 | 0d |  |

| ID | WBS | Task | Duration | Start | Finish | Predecessors | Total slack | Resources |
| --- | --- | --- | --- | --- | --- | --- | --- | --- |
| 29 | 3 | **Distribution Phase** | 16d | 2001-04-26 | 2001-05-17 | 15 | 0d |  |
| 30 | 3.1 | Stock warehouse | 7d | 2001-04-26 | 2001-05-04 |  | 0d | Scott Adams |
| 31 | 3.2 | Process orders | 5d | 2001-05-07 | 2001-05-11 | 30 | 0d | Scott Adams |
| 32 | 3.3 | Organize shipments | 5d | 2001-05-07 | 2001-05-11 | 30 | 0d | Mel Lloyd |
| 33 | 3.4 | Load trucks | 4d | 2001-05-14 | 2001-05-17 | 32 | 0d | Mel Lloyd |
| 34 | 3.5 | First shipment | 0d | 2001-05-17 | 2001-05-17 | 21, 33 | 0d |  |
| 35 | 4 | **Regional Promotions** | 20d | 2001-04-25 | 2001-05-23 | 15 | 0d |  |
| 36 | 7.1 | PR announcement event | 0d | 2001-04-25 | 2001-04-25 |  | 0d |  |
| 37 | 7.2 | Begin advertising campaign | 0d | 2001-04-25 | 2001-04-25 | 36 | 0d |  |
| 38 | 4.1 | West Coast promo week | 5d | 2001-04-26 | 2001-05-02 | 37 | 0d | Howard Thompson |
| 39 | 4.2 | East Coast promo week | 5d | 2001-05-03 | 2001-05-09 | 38 | 0d | Howard Thompson |
| 40 | 4.3 | Northern Region promo week | 5d | 2001-05-10 | 2001-05-16 | 39 | 0d | Howard Thompson |
| 41 | 4.4 | Southern Region promo week | 5d | 2001-05-17 | 2001-05-23 | 40 | 0d | Howard Thompson |
| 42 | 4.5 | End project | 0d | 2001-05-23 | 2001-05-23 | 31, 41 | 0d |  |
